# Aplicaciones_móviles_Pacasmayo_v1.0

Schedule from MS Project, 2012-11-05 to 2012-11-21.
B2Mobile SAC

## Calendars

- Estándar: Mon-Fri 09:00-13:00, 15:00-19:00; Sat-Sun off.

## Resources

| Resource |
| --- |
| AP-And1 |
| AP-ABAP1 |
| Usuario Lider |
| AP1 |
| AP2 |
| AL |
| CPSAA |
| AP-And2 |

## Schedule

| ID | WBS | Task | Duration | Start | Finish | Predecessors | Baseline start | Baseline finish | Baseline duration | Total slack | Constraint | Resources | Work |
| --- | --- | --- | --- | --- | --- | --- | --- | --- | --- | --- | --- | --- | --- |
| 1 | 1 | **Aplicaciones Móviles** | 13d | 2012-11-05 09:00 | 2012-11-21 19:00 |  |  |  |  | 0d |  |  | 48h |
| 2 | 1.1 | **Fase: Desarrollo** | 7d | 2012-11-05 09:00 | 2012-11-13 19:00 |  |  |  |  | 0d |  |  |  |
| 3 | 1.1.1 | **Alertas Bitácora** | 7d | 2012-11-05 09:00 | 2012-11-13 19:00 |  |  |  |  | 0d |  |  |  |
| 4 | 1.1.1.1 | **Desarrollo Frontal Android** | 7d | 2012-11-05 09:00 | 2012-11-13 19:00 |  |  |  |  | 0d |  |  |  |
| 5 | 1.1.1.1.1 | **REGISTRO LATITUD LONGITUD** | 7d | 2012-11-05 09:00 | 2012-11-13 19:00 |  |  |  |  | 0d |  |  |  |
| 6 | 1.1.1.1.1.1 | Desarrollo de Servicio en Background escuchando las alertas del usuario | 4d | 2012-11-05 09:00 | 2012-11-08 19:00 |  |  |  |  | 0d | start no earlier than 2012-11-05 09:00 |  |  |
| 7 | 1.1.1.1.1.2 | Mostrar Alertas en el área de notificación de Android y enviar respuesta al server al interactuar el usuario | 3d | 2012-11-09 09:00 | 2012-11-13 19:00 | 6 |  |  |  | 0d |  |  |  |
| 8 | 1.2 | **Fase: Pruebas** | 3.5d | 2012-11-14 09:00 | 2012-11-19 13:00 | 2 |  |  |  | 0d |  |  | 16h |
| 9 | 1.2.1 | **Pruebas unitarias** | 1d | 2012-11-14 09:00 | 2012-11-14 19:00 |  |  |  |  | 2.5d |  |  |  |
| 10 | 1.2.1.1 | Revisar funcionalidades desarrollos | 1d | 2012-11-14 09:00 | 2012-11-14 19:00 |  |  |  |  | 2.5d |  |  |  |
| 11 | 1.2.2 | Coordinar despliegue en ambiente pruebas CPSAA | 0.5d | 2012-11-14 09:00 | 2012-11-14 13:00 |  |  |  |  | 0d |  |  |  |
| 12 | 1.2.3 | **Pruebas integrales** | 1d | 2012-11-14 15:00 | 2012-11-15 13:00 | 11 |  |  |  | 0d |  |  |  |
| 13 | 1.2.3.1 | Revisar funcionalidades | 1d | 2012-11-14 15:00 | 2012-11-15 13:00 | 11 |  |  |  | 0d |  |  |  |
| 14 | 1.2.4 | **Documentacion** | 0.5d | 2012-11-14 09:00 | 2012-11-14 13:00 |  |  |  |  | 3d |  |  |  |
| 15 | 1.2.4.1 | Manual de Usuario | 0.5d | 2012-11-14 09:00 | 2012-11-14 13:00 |  |  |  |  | 3d |  |  |  |
| 16 | 1.2.4.2 | Manual de Instalación y Configuración del Sistema | 0.5d | 2012-11-14 09:00 | 2012-11-14 13:00 |  |  |  |  | 3d |  |  |  |
| 17 | 1.2.4.3 | Informe de Capacitación y Pruebas de Aceptación del Cliente | 0.5d | 2012-11-14 09:00 | 2012-11-14 13:00 |  |  |  |  | 3d |  |  |  |
| 18 | 1.2.5 | **Ajustes** | 2d | 2012-11-15 15:00 | 2012-11-19 13:00 | 12 | 2012-05-25 10:32 | 2012-06-01 10:32 | 5d | 0d |  |  | 16h |
| 19 | 1.2.5.1 | Presentar formalmente observaciones | 0.5d | 2012-11-15 15:00 | 2012-11-15 19:00 |  | 2012-05-25 10:32 | 2012-05-28 10:32 | 1d | 0d |  | Usuario Lider | 4h |
| 20 | 1.2.5.2 | Evaluar observaciones | 0.5d | 2012-11-16 09:00 | 2012-11-16 13:00 | 19 | 2012-05-28 10:32 | 2012-05-29 10:32 | 1d | 0d |  | AP-And2 | 4h |
| 21 | 1.2.5.3 | Programar correcciones | 1d | 2012-11-16 15:00 | 2012-11-19 13:00 | 20 | 2012-05-29 10:32 | 2012-06-01 10:32 | 3d | 0d |  | AP-And1 | 8h |
| 22 | 1.3 | **Fase: Pase a producción** | 1d | 2012-11-19 15:00 | 2012-11-20 13:00 | 8 | 2012-06-01 10:32 | 2012-06-04 10:32 | 1d | 0d |  |  | 16h |
| 23 | 1.3.1 | **Pase a producción** | 1d | 2012-11-19 15:00 | 2012-11-20 13:00 |  | 2012-06-01 10:32 | 2012-06-04 10:32 | 1d | 0d |  | AP-And1 | 16h |
| 24 | 1.3.1.1 | Implementar sistema en producción | 1d | 2012-11-19 15:00 | 2012-11-20 13:00 |  | 2012-06-01 10:32 | 2012-06-04 10:32 | 1d | 0d |  | AP-And1 | 8h |

Notes:
- 6: ANTES DEBE ESTAR DESARROLLADO EL WEBSERVICE!
- 18: Etapa en la que el usuario indica sus observaciones en cuando al desempeño funcional y técnico del requerimiento implementado, por lo que el programador, deberá corregir el error técnico pero primero debe ser evaluado.

| ID | WBS | Task | Duration | Start | Finish | Predecessors | Baseline start | Baseline finish | Baseline duration | Total slack | Resources | Work |
| --- | --- | --- | --- | --- | --- | --- | --- | --- | --- | --- | --- | --- |
| 25 | 1.4 | **Fase: Capacitación** | 0.5d | 2012-11-20 15:00 | 2012-11-20 19:00 | 22 | 2012-06-04 10:32 | 2012-06-06 10:32 | 2d | 0d |  | 8h |
| 26 | 1.4.1 | **Capacitación a usuarios** | 0.5d | 2012-11-20 15:00 | 2012-11-20 19:00 |  | 2012-06-04 10:32 | 2012-06-06 10:32 | 2d | 0d |  | 8h |
| 27 | 1.4.1.1 | Preparar material | 0.5d | 2012-11-20 15:00 | 2012-11-20 19:00 |  | 2012-06-04 10:32 | 2012-06-05 10:32 | 1d | 0d | AP-And1 | 4h |
| 28 | 1.4.1.2 | Capacitar a usuarios | 0.5d | 2012-11-20 15:00 | 2012-11-20 19:00 |  | 2012-06-04 10:32 | 2012-06-06 10:32 | 2d | 0d | AL | 4h |
| 29 | 1.5 | **Fase: Post-Produccion** | 1d | 2012-11-21 09:00 | 2012-11-21 19:00 | 25 | 2012-06-06 10:32 | 2012-06-13 10:32 | 5d | 0d |  | 8h |
| 30 | 1.5.1 | Programar correcciones | 1d | 2012-11-21 09:00 | 2012-11-21 19:00 |  | 2012-06-06 10:32 | 2012-06-13 10:32 | 5d | 0d | AP-And1 | 8h |
