# SGI

Schedule from MS Project, 2012-10-10 to 2013-03-01.

## Calendars

- Estándar: Mon-Fri 09:00-13:00, 15:00-19:00; Sat-Sun off. Exceptions (off unless hours are given): 2012-11-01 (Feriado: Día de todos los Santos), 2012-12-25 (Navidad), 2013-01-01 (Año nuevo).

## Resources

| Resource |
| --- |
| CPSAA |
| AF |
| AP1 |
| AP2 |
| DW |
| ABAPER |
| CPS |
| APMOVIL |
| JP |
| ABAP |

## Schedule

| ID | WBS | Task | Type | Duration | Start | Finish | Predecessors | Total slack | Constraint | Resources | Work |
| --- | --- | --- | --- | --- | --- | --- | --- | --- | --- | --- | --- |
| 1 | 1 | **Bitacora de Operaciones** |  | 100d | 2012-10-10 | 2013-03-01 |  | 0d |  |  | 5026.88h |
| 2 | 1.1 | **Levantamiento de información** |  | 28d | 2012-10-10 | 2012-11-19 |  | 0d |  |  | 776h |
| 3 | 1.1.1 | **Reunirse con usuarios para levantamiento de información** |  | 10d | 2012-10-10 | 2012-10-23 |  | 28d |  | CPSAA; AF; AP1 | 240h |
| 4 | 1.1.1.1 | 1 |  | 1d | 2012-10-10 | 2012-10-10 |  | 37d | start no earlier than 2012-10-10 |  |  |
| 5 | 1.1.1.2 | 2 |  | 1d | 2012-10-11 | 2012-10-11 |  | 36d | start no earlier than 2012-10-11 |  |  |
| 6 | 1.1.1.3 | 3 |  | 1d | 2012-10-12 | 2012-10-12 |  | 35d | start no earlier than 2012-10-12 |  |  |
| 7 | 1.1.1.4 | 4 |  | 1d | 2012-10-15 | 2012-10-15 |  | 34d | start no earlier than 2012-10-13 |  |  |
| 8 | 1.1.1.5 | 5 |  | 1d | 2012-10-16 | 2012-10-16 |  | 33d | start no earlier than 2012-10-16 |  |  |
| 9 | 1.1.1.6 | 6 |  | 1d | 2012-10-17 | 2012-10-17 |  | 32d | start no earlier than 2012-10-17 |  |  |
| 10 | 1.1.1.7 | 7 |  | 1d | 2012-10-18 | 2012-10-18 |  | 31d | start no earlier than 2012-10-18 |  |  |
| 11 | 1.1.1.8 | 8 |  | 1d | 2012-10-19 | 2012-10-19 |  | 30d | start no earlier than 2012-10-19 |  |  |
| 12 | 1.1.1.9 | 9 |  | 1d | 2012-10-22 | 2012-10-22 |  | 29d | start no earlier than 2012-10-20 |  |  |
| 13 | 1.1.1.10 | 10 |  | 1d | 2012-10-23 | 2012-10-23 |  | 28d | start no earlier than 2012-10-23 |  |  |
| 14 | 1.1.2 | Realizar formularios de aplicación |  | 10d | 2012-10-10 | 2012-10-23 |  | 28d | start no earlier than 2012-10-10 | AP1 | 80h |
| 15 | 1.1.3 | Elaborar BBP |  | 14d | 2012-10-10 | 2012-10-29 |  | 0d | start no earlier than 2012-10-10 | AF | 112h |
| 16 | 1.1.4 | **Definición de arquitectura de aplicación** |  | 14d | 2012-10-30 | 2012-11-19 | 15 | 0d |  |  | 344h |
| 17 | 1.1.4.1 | Coordinar definición de arquitectura de aplicación |  | 1d | 2012-10-30 | 2012-10-30 |  | 0d |  | CPSAA; AF; AP1; JP | 32h |
| 18 | 1.1.4.2 | Definir modelo lógico |  | 3d | 2012-10-31 | 2012-11-05 | 17 | 0d |  | CPSAA; AF; AP1 | 72h |
| 19 | 1.1.4.3 | Definir RFCs |  | 5d | 2012-11-06 | 2012-11-12 | 18 | 0d |  | CPSAA; AF; ABAP | 120h |
| 20 | 1.1.4.4 | Definir integración con SGCP |  | 5d | 2012-11-13 | 2012-11-19 | 19 | 0d |  | CPSAA; AF; AP1 | 120h |
| 21 | 1.2 | **Aprobación de BBP, formularios de aplicación y modelo lógico** |  | 10d | 2012-11-20 | 2012-12-03 | 16 | 0d |  |  | 128h |
| 22 | 1.2.1 | Revisar BBP con formularios de aplicación |  | 2d | 2012-11-20 | 2012-11-21 |  | 0d | start no earlier than 2012-08-24 | CPSAA | 16h |
| 23 | 1.2.2 | Revisar modelo lógico |  | 2d | 2012-11-22 | 2012-11-23 | 22 | 0d |  | CPSAA | 16h |
| 24 | 1.2.3 | Realizar ajustes al BBP |  | 5d | 2012-11-26 | 2012-11-30 | 23 | 0d |  | AF; JP | 80h |
| 25 | 1.2.4 | Aprobación final | milestone | 1d | 2012-12-03 | 2012-12-03 | 24 | 0d |  | CPSAA; JP | 16h |

Notes:
- 14: -Uso de herramienta para dibujar los formularios. Esto no implica la parte de diseño gráfico.
- 15: -Despues de los 10 días de levantamiento de información en conjunto con la elaboración del BBP, se consideran días adicionales (trabajados en Lima) para realizar ajustes y completar definiciones del modulo de seguridad (definición de roles)
- 16: -Usar librerías estandares como jquery / -Framework:spring mvc, hibernate, etc. Se requiere reunión con Miguel Ortiz para ver preferencias.
- 18: -Mejorar modelo lógico de PM (SAP)
- 19: -Incluye definición de parámetros enviados desde la nueva aplicación a SAP, y datos insertados en SAP.
- 20: -Definir en qué tablas del SGCP se registrará la data de cambio de equipo y producto desde la nueva aplicación. Y que accesos se otorgarán. / -Definir desde que tablas del SGCP se obtendrá la información para la generación de reportes.

| ID | WBS | Task | Type | Duration | Start | Finish | Predecessors | Total slack | Free slack | Resources | Work |
| --- | --- | --- | --- | --- | --- | --- | --- | --- | --- | --- | --- |
| 26 | 1.3 | **Desarrollo** |  | 38d | 2012-12-04 | 2013-01-28 | 2, 21 | 0d |  |  | 2136h |
| 27 | 1.3.1 | **Diseño de aplicación Web** |  | 14d | 2012-12-04 | 2012-12-21 |  | 43d | 19d |  | 152h |
| 28 | 1.3.1.1 | Proponer línea gráfica de la aplicación |  | 3d | 2012-12-04 | 2012-12-06 |  | 43d | 0d | DW | 24h |
| 29 | 1.3.1.2 | Aprobar Línea Gráfica | milestone | 2d | 2012-12-07 | 2012-12-10 | 28 | 43d | 0d | CPSAA; JP | 32h |
| 30 | 1.3.1.3 | Realizar prototipos con diseño gráfico |  | 6d | 2012-12-11 | 2012-12-18 | 29 | 43d | 0d | DW | 48h |
| 31 | 1.3.1.4 | Aprobar prototipos | milestone | 3d | 2012-12-19 | 2012-12-21 | 30 | 43d |  | CPSAA; JP | 48h |
| 32 | 1.3.2 | **Aplicación Web** |  | 33d | 2012-12-04 | 2013-01-21 |  | 24d | 0d |  | 1504h |
| 33 | 1.3.2.1 | **Implementar arquitectura** |  | 5d | 2012-12-04 | 2012-12-10 |  | 24d | 0d |  | 72h |
| 34 | 1.3.2.1.1 | Implementar arquitectura |  | 2d | 2012-12-04 | 2012-12-05 |  | 24d | 0d | AP2 | 16h |
| 35 | 1.3.2.1.2 | Implementar modelo lógico |  | 4d | 2012-12-04 | 2012-12-07 |  | 25d |  | AP1 | 32h |
| 36 | 1.3.2.1.3 | Implementar ambiente para pruebas unitarias |  | 3d | 2012-12-06 | 2012-12-10 | 34 | 24d |  | AP2 | 24h |
| 37 | 1.3.2.2 | Implementar modulo de seguridad |  | 5d | 2012-12-11 | 2012-12-17 | 33 | 24d | 0d | AP2 | 40h |
| 38 | 1.3.2.3 | **Implementar RFCs** |  | 5d | 2012-12-04 | 2012-12-10 |  | 52d |  | ABAPER | 80h |
| 39 | 1.3.2.3.1 | Implementar RFC para creación de avisos |  | 5d | 2012-12-04 | 2012-12-10 |  | 52d |  | ABAPER | 40h |
| 40 | 1.3.2.4 | **Modulo ocurrencias** |  | 7d | 2012-12-11 | 2012-12-19 | 33 | 45d |  | AP1 | 168h |
| 41 | 1.3.2.4.1 | Implementar modulo |  | 7d | 2012-12-11 | 2012-12-19 |  | 45d |  | AP1 | 56h |
| 42 | 1.3.2.4.2 | Realizar pruebas unitarias |  | 7d | 2012-12-11 | 2012-12-19 |  | 45d |  | AP1 | 56h |
| 43 | 1.3.2.5 | **Modulo Alertas** |  | 9d | 2012-12-18 | 2012-12-31 | 37 | 24d | 0d | AP2 | 192h |
| 44 | 1.3.2.5.1 | Implementar modulo |  | 6d | 2012-12-18 | 2012-12-26 |  | 24d | 0d | AP2 | 48h |
| 45 | 1.3.2.5.2 | Realizar pruebas unitarias |  | 6d | 2012-12-18 | 2012-12-26 |  | 24d | 0d | AP2 | 48h |
| 46 | 1.3.2.5.3 | Implementar webservice |  | 3d | 2012-12-27 | 2012-12-31 | 44, 45 | 24d |  | AP2 | 24h |
| 47 | 1.3.2.6 | **Funcionalidad de paradas** |  | 7d | 2012-12-04 | 2012-12-12 |  | 31d | 0d | AP1 | 168h |
| 48 | 1.3.2.6.1 | Implementar funcionalidad |  | 7d | 2012-12-04 | 2012-12-12 |  | 31d |  | AP1 | 56h |
| 49 | 1.3.2.6.2 | Realizar pruebas unitarias |  | 7d | 2012-12-04 | 2012-12-12 |  | 31d |  | AP1 | 56h |

Notes:
- 35: -Implica realizar una precarga de la data de PM (SAP)
- 37: -Funcionalidad para gestión de roles y creación de tablas de usuario (correo electronico, imei, sms)
- 40: -Incluye pruebas que garanticen compatibilidad y buena resolución
- 43: -Implementar funcionalidad que permite crear tipos de alertas y que estas sean asignadas a roles de usuarios
- 46: -Para facilitar programación al modulo de movilidad. / -Utilizar REST. / -Crear parada, notificar alerta, login.
- 47: -Generación de alertas cuando la ocurrencia es del tipo parada. / -De acuerdo al tipo de falla replicar el aviso en SAP. Implementar llamada a RFCs. / *Proponer validación de generación de avisos, en caso el usuario se equivoque.

| ID | WBS | Task | Type | Duration | Start | Finish | Predecessors | Total slack | Free slack | Resources | Work |
| --- | --- | --- | --- | --- | --- | --- | --- | --- | --- | --- | --- |
| 50 | 1.3.2.7 | **Funcionalidad de cambio de equipo** |  | 7d | 2013-01-02 | 2013-01-10 | 43 | 24d | 0d | AP2 | 168h |
| 51 | 1.3.2.7.1 | Implementar modulo |  | 7d | 2013-01-02 | 2013-01-10 |  | 24d |  | AP2 | 56h |
| 52 | 1.3.2.7.2 | Realizar pruebas unitarias |  | 7d | 2013-01-02 | 2013-01-10 |  | 24d |  | AP2 | 56h |
| 53 | 1.3.2.8 | **Funcionalidad de cambio de producto** |  | 7d | 2013-01-11 | 2013-01-21 | 50 | 24d |  | AP2 | 168h |
| 54 | 1.3.2.8.1 | Implementar modulo |  | 7d | 2013-01-11 | 2013-01-21 |  | 24d |  | AP2 | 56h |
| 55 | 1.3.2.8.2 | Realizar pruebas unitarias |  | 7d | 2013-01-11 | 2013-01-21 |  | 24d |  | AP2 | 56h |
| 56 | 1.3.2.9 | **Modulo Reportes** |  | 19d | 2012-12-13 | 2013-01-10 | 47 | 31d |  | AP1 | 304h |
| 57 | 1.3.2.9.1 | Implementar modulo |  | 15d | 2012-12-13 | 2013-01-04 |  | 31d | 0d | AP1 | 120h |
| 58 | 1.3.2.9.2 | Realizar pruebas unitarias |  | 4d | 2013-01-07 | 2013-01-10 | 57 | 31d |  | AP1 | 32h |
| 59 | 1.3.2.10 | **Modulo Alertas - Aplicación movil nativa** |  | 9d | 2013-01-02 | 2013-01-14 | 43 | 29d |  | APMOVIL | 144h |
| 60 | 1.3.2.10.1 | Desarrollar Servicio en Background escuchando las alertas del usuario |  | 4d | 2013-01-02 | 2013-01-07 |  | 29d | 0d | APMOVIL | 32h |
| 61 | 1.3.2.10.2 | Mostrar Alertas en el área de notificación de Android y enviar respuesta al server al interactuar el usuario |  | 3d | 2013-01-08 | 2013-01-10 | 60 | 29d | 0d | APMOVIL | 24h |
| 62 | 1.3.2.10.3 | Realizar documentación |  | 2d | 2013-01-11 | 2013-01-14 | 61 | 29d |  | APMOVIL | 16h |
| 63 | 1.3.3 | **Integración** |  | 5d | 2013-01-22 | 2013-01-28 | 32, 27 | 24d |  | AP1; AP2 | 160h |
| 64 | 1.3.3.1 | Integrar modulos |  | 5d | 2013-01-22 | 2013-01-28 |  | 24d |  | AP1; AP2 | 80h |
| 65 | 1.3.4 | **Documentación** |  | 20d | 2012-12-04 | 2013-01-02 |  | 0d |  | AF | 320h |
| 66 | 1.3.4.1 | Realizar plan de pruebas |  | 1d | 2012-12-04 | 2012-12-04 |  | 0d |  | AF | 8h |
| 67 | 1.3.4.2 | Realizar casos de prueba |  | 8d | 2012-12-05 | 2012-12-14 | 66 | 0d |  | AF | 64h |
| 68 | 1.3.4.3 | Realizar manual de usuario |  | 8d | 2012-12-17 | 2012-12-27 | 67 | 0d |  | AF | 64h |
| 69 | 1.3.4.4 | Realizar diccionario de datos |  | 3d | 2012-12-28 | 2013-01-02 | 68 | 0d |  | AF | 24h |
| 70 | 1.4 | **Pruebas** |  | 28d | 2013-01-03 | 2013-02-11 | 69 | 0d |  |  | 1339.2h |
| 71 | 1.4.1 | Pruebas Unitarias |  | 11d | 2013-01-03 | 2013-01-17 |  | 0d |  | AF; AP1; AP2; JP [50%]; APMOVIL | 396h |
| 72 | 1.4.2 | Proveer servidor de pruebas con webservice rest para aplicación movil | milestone | 7d | 2013-01-03 | 2013-01-11 |  | 4d |  | CPSAA; JP [50%] | 84h |
| 73 | 1.4.3 | Proveer servidor de pruebas para aplicación web | milestone | 7d | 2013-01-03 | 2013-01-11 |  | 4d |  | CPSAA; JP [50%] | 84h |
| 74 | 1.4.4 | Pruebas Integrales |  | 17d | 2013-01-18 | 2013-02-11 | 73, 72, 71 | 0d |  | CPSAA; AF; AP1; AP2; JP [70%]; APMOVIL | 775.2h |

Notes:
- 50: -Se integrará con el SGCP, directamente a la BD.
- 53: -Se integrará con el SGCP, directamente a la BD.
- 56: -Implementar 5 tipos de reporte: pareto, tendencia, pie, barras, texto resumen. / -CPSAA tiene preferencias por alguna librería de reportes?. / -Se requiere exportación a xls, pdf? / -Implementar modulo con SGCP. Conexión directa o por una interfaz?
- 71: -Incluye las pruebas unitarias de la aplicación movil nativa (1día)
- 74: -Incluye detección de observaciones y corrección por parte de los analistas programadores. / -Incluye pruebas integrales de aplicación movil nativa (3 días entre correcciones)

| ID | WBS | Task | Duration | Start | Finish | Predecessors | Total slack | Constraint | Resources | Work |
| --- | --- | --- | --- | --- | --- | --- | --- | --- | --- | --- |
| 75 | 1.5 | **Pase a producción** | 1d | 2013-02-12 | 2013-02-12 | 70 | 0d |  | CPSAA | 48h |
| 76 | 1.5.1 | Realizar pase a producción | 1d | 2013-02-12 | 2013-02-12 |  | 0d |  | CPSAA; AP1; AP2; AF; JP | 40h |
| 77 | 1.6 | **Post-Producción** | 8d | 2013-02-13 | 2013-02-22 | 75 | 0d |  | AP2; AP1; APMOVIL | 327.68h |
| 78 | 1.6.1 | Realizar actividades de soporte | 8d | 2013-02-13 | 2013-02-22 |  | 0d |  | AP1; AP2; APMOVIL [12%] | 135.68h |
| 79 | 1.7 | **Capacitación** | 8d | 2013-02-13 | 2013-02-22 | 75 | 5d |  | AF; APMOVIL | 192h |
| 80 | 1.7.1 | Realizar capacitación a usuarios | 8d | 2013-02-13 | 2013-02-22 |  | 5d |  | AF [88%]; APMOVIL [12%] | 64h |
| 81 | 1.8 | **Manual Técnico** | 5d | 2013-02-25 | 2013-03-01 | 77 | 0d |  | AP1; AP2 | 80h |
| 82 | 1.8.1 | Realizar documento | 5d | 2013-02-25 | 2013-03-01 |  | 0d | start no earlier than 2012-10-12 |  |  |

Notes:
- 77: -Incluye post producción de aplicación movil nativa (1 día)
- 79: -Incluye capacitación en uso de aplicación movil nativa (1 día)
